# sample1

Schedule from MS Project, 2018-03-05 to 2018-08-23, costs in $, A marks actual dates.

## Calendars

- Standard: Mon-Fri 08:00-12:00, 13:00-17:00; Sat-Sun 08:00-20:00.

## Resources

| Resource | Rate |
| --- | --- |
| navid | 6 |
| omid | 6 |
| reza | 6 |

## Schedule

| ID | WBS | Task | Type | Duration | Start | Finish | Predecessors | Complete | Remaining | Actual finish | Total slack | Resources | Work | Actual work | Cost | Actual cost | تاریخ شروع کار | تاریخ اتمام | تاریخ شروع |
| --- | --- | --- | --- | --- | --- | --- | --- | --- | --- | --- | --- | --- | --- | --- | --- | --- | --- | --- | --- |
| 1 | 1 | **پروژه ی تحلیل و طراحی** |  | 196d | 2018-03-05 08:00 A | 2018-08-23 17:00 |  | 34% | 129.28d |  | 0d |  | 2135h | 581h | 12,690 | 3,366 | 96/12/14 | 97/06/01 | NA |
| 2 | 1.1 | **فاز اول پروژه** |  | 2d | 2018-03-05 08:00 A | 2018-03-06 17:00 A |  | 100% |  |  |  | navid | 39h | 39h | 114 | 114 | 96/12/14 | 96/12/15 | NA |
| 3 | 1.1.1 | **تهیه پروپوزال** |  | 1d | 2018-03-05 08:00 A | 2018-03-05 17:00 |  | 100% |  | 2018-03-05 11:00 |  |  | 16h | 16h | 24 | 24 | 96/12/14 | 96/12/14 | NA |
| 4 | 1.1.1.1 | اهداف و توجیه |  | 1h | 2018-03-05 08:00 A | 2018-03-05 09:00 A |  | 100% |  |  |  | navid | 1h | 1h |  |  | 96/12/14 | 96/12/14 | NA |
| 5 | 1.1.1.2 | معرفی و مفاد قرارداد |  | 1h | 2018-03-05 08:00 A | 2018-03-05 09:00 A |  | 100% |  |  |  | navid | 1h | 1h |  |  | 96/12/14 | 96/12/14 | NA |
| 6 | 1.1.1.3 | **معرفی سیستم و توضیح تکنولوژی** |  | 3h | 2018-03-05 08:00 A | 2018-03-05 11:00 A |  | 100% |  |  |  | navid | 6h | 6h | 18 | 18 | 96/12/14 | 96/12/14 | NA |
| 7 | 1.1.1.3.1 | تهیه گزینه راه حل‌های تکنولوژی |  | 1h | 2018-03-05 08:00 A | 2018-03-05 09:00 A |  | 100% |  |  |  | navid | 1h | 1h |  |  | 96/12/14 | 96/12/14 | NA |
| 8 | 1.1.1.3.2 | امکان سنجی گزینه ها |  | 1h | 2018-03-05 09:00 A | 2018-03-05 10:00 A | 7 | 100% |  |  |  | navid | 1h | 1h |  |  | 96/12/14 | 96/12/14 | NA |
| 9 | 1.1.1.3.3 | انتخاب گزینه راه حل نهایی |  | 1h | 2018-03-05 10:00 A | 2018-03-05 11:00 A | 8 | 100% |  |  |  | navid | 1h | 1h |  |  | 96/12/14 | 96/12/14 | NA |
| 10 | 1.1.1.4 | **پوشش نیازمندی‌های کارکردی و غیرکارکردی** |  | 1h | 2018-03-05 08:00 A | 2018-03-05 09:00 A |  | 100% |  |  |  | navid | 3h | 3h | 6 | 6 | 96/12/14 | 96/12/14 | NA |
| 11 | 1.1.1.4.1 | نیازمندی‌های کارکردی |  | 1h | 2018-03-05 08:00 A | 2018-03-05 09:00 A |  | 100% |  |  |  | navid | 1h | 1h |  |  | 96/12/14 | 96/12/14 | NA |
| 12 | 1.1.1.4.2 | نیازمندی‌های غیرکارکردی |  | 1h | 2018-03-05 08:00 A | 2018-03-05 09:00 A |  | 100% |  |  |  | navid | 1h | 1h |  |  | 96/12/14 | 96/12/14 | NA |
| 13 | 1.1.1.5 | برآورد زمانی | manual | 1h | 2018-03-05 09:00 A | 2018-03-05 10:00 A |  | 100% |  |  |  | navid | 1h | 1h |  |  | 96/12/14 | 96/12/14 | NA |
| 14 | 1.1.1.6 | برآوردمالی |  | 1h | 2018-03-05 10:00 A | 2018-03-05 11:00 A | 13 | 100% |  |  |  | navid | 1h | 1h |  |  | 96/12/14 | 96/12/14 | NA |
| 15 | 1.1.1.7 | مراحل اجرای پروژه |  | 1h | 2018-03-05 08:00 A | 2018-03-05 09:00 A |  | 100% |  |  |  | navid | 1h | 1h |  |  | 96/12/14 | 96/12/14 | NA |
| 16 | 1.1.1.8 | معرفی اعضای گروه |  | 1h | 2018-03-05 08:00 A | 2018-03-05 09:00 A |  | 100% |  |  |  | navid | 1h | 1h |  |  | 96/12/14 | 96/12/14 | NA |
| 17 | 1.1.1.9 | بیان نمرات اضافی |  | 1h | 2018-03-05 09:00 A | 2018-03-05 10:00 A |  | 100% |  |  |  | navid | 1h | 1h |  |  | 96/12/14 | 96/12/14 | NA |
| 18 | 1.1.2 | بازخوانی و تصحیح پروپوزال و آماده سازی نسخه نهایی |  | 1d | 2018-03-06 08:00 A | 2018-03-06 17:00 A | 3 | 100% |  |  |  | navid | 8h | 8h |  |  | 96/12/15 | 96/12/15 | NA |
| 19 | 1.1.3 | ارسال نسخه نهایی | milestone | 0d | 2018-03-06 17:00 A | 2018-03-06 17:00 A | 18 | 100% |  |  |  | navid |  |  |  |  | 96/12/15 | 96/12/15 | NA |
| 20 | 1.2 | **فاز دوم پروژه** |  | 9.5d | 2018-03-07 08:00 A | 2018-03-15 12:00 A | 2 | 100% |  |  |  |  | 25h | 25h | 150 | 150 | 96/12/16 | 96/12/24 | NA |
| 21 | 1.2.1 | **آماده سازی درخت شکست کار** |  | 0.12d | 2018-03-07 08:00 A | 2018-03-07 09:00 A |  | 100% |  |  |  | navid; omid; reza | 3h | 3h | 18 | 18 | 96/12/16 | 96/12/16 | NA |
| 22 | 1.2.1.1 | مرور پروپوزال و موارد تعیین شده | manual | 1h | 2018-03-07 08:00 A | 2018-03-07 09:00 A |  | 100% |  |  |  |  |  |  |  |  | 96/12/16 | 96/12/16 | NA |
| 23 | 1.2.1.2 | تخمین زمانی هر فاز | manual | 1h | 2018-03-07 08:00 A | 2018-03-07 09:00 A |  | 100% |  |  |  |  |  |  |  |  | 96/12/16 | 96/12/16 | NA |
| 24 | 1.2.1.3 | تخمین منابع مورد نیاز | manual | 1h | 2018-03-07 08:00 A | 2018-03-07 09:00 A |  | 100% |  |  |  |  |  |  |  |  | 96/12/16 | 96/12/16 | NA |
| 25 | 1.2.1.4 | تقسیم بندی وظایف متناسب با تخمین های زده شده | manual | 1h | 2018-03-07 08:00 A | 2018-03-07 09:00 A |  | 100% |  |  |  |  |  |  |  |  | 96/12/16 | 96/12/16 | NA |
| 26 | 1.2.2 | وارد کردن ساختار درخت شکست کار در نرم افزار |  | 2d | 2018-03-07 09:00 A | 2018-03-09 09:00 A | 21 | 100% |  |  |  | navid | 16h | 16h | 96 | 96 | 96/12/16 | 96/12/18 | NA |
| 27 | 1.2.3 | کنترل نهایی مدیر پروژه و ارسال |  | 3h | 2018-03-15 09:00 A | 2018-03-15 12:00 A | 26FS+4d | 100% |  |  |  | navid; reza | 6h | 6h | 36 | 36 | 96/12/24 | 96/12/24 | NA |

| ID | WBS | Task | Type | Duration | Start | Finish | Predecessors | Complete | Remaining | Actual start | Actual finish | Constraint | Resources | Work | Actual work | Cost | Actual cost | تاریخ شروع کار | تاریخ اتمام | تاریخ شروع |
| --- | --- | --- | --- | --- | --- | --- | --- | --- | --- | --- | --- | --- | --- | --- | --- | --- | --- | --- | --- | --- |
| 28 | 1.3 | **فاز سوم پروژه** |  | 32d | 2018-04-03 08:00 A | 2018-04-30 17:00 | 20 | 100% |  |  | 2018-04-29 16:00 |  |  | 285h | 285h | 1,710 | 1,710 | 97/01/14 | 97/02/10 | NA |
| 29 | 1.3.1 | **use case تدوین** |  | 30.38d | 2018-04-03 08:00 A | 2018-04-29 15:00 A |  | 100% |  |  |  |  |  | 285h | 285h | 1,710 | 1,710 | 97/01/14 | 97/02/09 | NA |
| 30 | 1.3.1.1 | **use case تدوین** |  | 12.12d | 2018-04-03 08:00 A | 2018-04-14 09:00 A |  | 100% |  |  |  |  |  | 178h | 178h | 1,068 | 1,068 | 97/01/14 | 97/01/25 | NA |
| 31 | 1.3.1.1.1 | شناسایی ابزار مناسب نرم افزاری | manual | 2h | 2018-04-03 08:00 A | 2018-04-03 10:00 A |  | 100% |  |  |  |  | omid | 2h | 2h | 12 | 12 | 97/01/14 | 97/01/14 | NA |
| 32 | 1.3.1.1.2 | **use case نوشتن** |  | 6.25d | 2018-04-03 08:00 A | 2018-04-08 14:00 A |  | 100% |  |  |  |  |  | 81h | 81h | 486 | 486 | 97/01/14 | 97/01/19 | NA |
| 33 | 1.3.1.1.2.1 | actors مشخص کردن |  | 34h | 2018-04-03 08:00 A | 2018-04-07 10:00 A |  | 100% |  |  |  |  | navid | 34h | 34h | 204 | 204 | 97/01/14 | 97/01/18 | NA |
| 34 | 1.3.1.1.2.2 | مشخص کردن نیاز مندی های کسب و کاری |  | 15h | 2018-04-03 08:00 A | 2018-04-04 16:00 A |  | 100% |  |  |  |  | reza | 15h | 15h | 90 | 90 | 97/01/14 | 97/01/15 | NA |
| 35 | 1.3.1.1.2.3 | نوشتن دیاگرام کلی بر روی کاغذ |  | 2d | 2018-04-07 10:00 A | 2018-04-08 14:00 A | 33, 34 | 100% |  |  |  |  | omid; reza | 32h | 32h | 192 | 192 | 97/01/18 | 97/01/19 | NA |
| 36 | 1.3.1.1.3 | تایید نهایی دیاگرام توسط مدیر پروژه و اعضا |  | 3h | 2018-04-08 14:00 A | 2018-04-08 17:00 A | 35 | 100% |  |  |  |  | navid | 3h | 3h | 18 | 18 | 97/01/19 | 97/01/19 | NA |
| 37 | 1.3.1.1.4 | وارد کردن در ابزار مناسب |  | 8h | 2018-04-08 17:00 A | 2018-04-09 14:00 A | 36 | 100% |  |  |  |  | reza | 8h | 8h | 48 | 48 | 97/01/19 | 97/01/20 | NA |
| 38 | 1.3.1.1.5 | **مستند سازی** |  | 4.12d | 2018-04-09 14:00 A | 2018-04-13 15:00 A |  | 100% |  |  |  |  |  | 81h | 81h | 486 | 486 | 97/01/20 | 97/01/24 | NA |
| 39 | 1.3.1.1.5.1 | use case مستند سازی |  | 3d | 2018-04-09 14:00 A | 2018-04-12 14:00 A | 37 | 100% |  |  |  |  | reza; navid; omid | 72h | 72h | 432 | 432 | 97/01/20 | 97/01/23 | NA |
| 40 | 1.3.1.1.5.2 | اولویت بندی |  | 4h | 2018-04-12 14:00 A | 2018-04-13 09:00 A | 39 | 100% |  |  |  |  | omid | 4h | 4h | 24 | 24 | 97/01/23 | 97/01/24 | NA |
| 41 | 1.3.1.1.5.3 | پیدا کردن رابطه های پیشنیازی و پسنیازی |  | 5h | 2018-04-13 09:00 A | 2018-04-13 15:00 A | 40 | 100% |  |  |  |  | reza | 5h | 5h | 30 | 30 | 97/01/24 | 97/01/24 | NA |
| 42 | 1.3.1.1.6 | تایید و بازخوانی توسط اعضا و مدیر و ادغام |  | 3h | 2018-04-13 15:00 A | 2018-04-14 09:00 A | 41 | 100% |  |  |  |  | navid | 3h | 3h | 18 | 18 | 97/01/24 | 97/01/25 | NA |
| 43 | 1.3.1.2 | **تدوین سناریو های تست** |  | 7.38d | 2018-04-23 08:00 A | 2018-04-29 15:00 A |  | 100% |  |  |  |  |  | 107h | 107h | 642 | 642 | 97/02/03 | 97/02/09 | NA |
| 44 | 1.3.1.2.1 | نوشتن سناریو ها |  | 3d | 2018-04-23 08:00 A | 2018-04-25 17:00 A | 42 | 100% |  |  |  |  | reza; navid; omid | 72h | 72h | 432 | 432 | 97/02/03 | 97/02/05 | NA |
| 45 | 1.3.1.2.2 | مشخص کردن تست ها |  | 2d | 2018-04-26 08:00 A | 2018-04-27 17:00 A | 44 | 100% |  |  |  |  | reza | 16h | 16h | 96 | 96 | 97/02/06 | 97/02/07 | NA |
| 46 | 1.3.1.2.3 | مشخص کردن داده ی تست ها |  | 2d | 2018-04-28 08:00 A | 2018-04-29 12:00 A | 45 | 100% |  |  |  |  | omid | 16h | 16h | 96 | 96 | 97/02/08 | 97/02/09 | NA |
| 47 | 1.3.1.2.4 | تایید توسط اعضا و مدیر |  | 3h | 2018-04-29 12:00 A | 2018-04-29 15:00 A | 46 | 100% |  |  |  |  | navid | 3h | 3h | 18 | 18 | 97/02/09 | 97/02/09 | NA |
| 48 | 1.3.2 | وتست هاuse case فرستادن |  | 1h | 2018-04-29 15:00 A | 2018-04-29 16:00 A | 47 | 100% |  |  |  |  |  |  |  |  |  | 97/02/09 | 97/02/09 | NA |
| 49 | 1.4 | **فاز چهارم پروژه** |  | 48d | 2018-05-03 08:00 A | 2018-06-13 17:00 | 48 | 84% | 7.85d |  |  |  |  | 268h | 232h | 1,608 | 1,392 | 97/02/13 | 97/03/23 | NA |
| 50 | 1.4.1 | **use case تدوین** |  | 27.38d | 2018-05-10 08:00 | 2018-06-02 19:00 |  | 84% | 4.38d | 2018-05-03 08:00 |  |  |  | 267h | 232h | 1,602 | 1,392 | 97/02/20 | 97/03/12 | NA |
| 51 | 1.4.1.1 | **use case تدوین** |  | 16.62d | 2018-05-03 08:00 A | 2018-05-17 14:00 |  | 96% | 0.62d |  |  |  |  | 181h | 176h | 1,086 | 1,056 | 97/02/13 | 97/02/27 | NA |
| 52 | 1.4.1.1.1 | **use case نوشتن** |  | 8.75d | 2018-05-03 08:00 A | 2018-05-10 15:00 A |  | 100% |  |  |  |  |  | 118h | 118h | 708 | 708 | 97/02/13 | 97/02/20 | NA |
| 53 | 1.4.1.1.1.1 | actors مشخص کردن |  | 2d | 2018-05-03 08:00 A | 2018-05-04 17:00 A | 48 | 100% |  |  |  |  | navid | 16h | 16h | 96 | 96 | 97/02/13 | 97/02/14 | NA |
| 54 | 1.4.1.1.1.2 | مشخص کردن نیاز مندی های کسب و کاری |  | 30h | 2018-05-05 08:00 A | 2018-05-07 15:00 A | 53 | 100% |  |  |  |  | reza | 30h | 30h | 180 | 180 | 97/02/15 | 97/02/17 | NA |
| 55 | 1.4.1.1.1.3 | نوشتن دیاگرام کلی بر روی کاغذ |  | 3d | 2018-05-07 15:00 A | 2018-05-10 15:00 A | 54 | 100% |  |  |  |  | navid; reza; omid | 72h | 72h | 432 | 432 | 97/02/17 | 97/02/20 | NA |
| 56 | 1.4.1.1.2 | تایید نهایی دیاگرام توسط مدیر پروژه و اعضا |  | 3h | 2018-05-10 15:00 A | 2018-05-11 09:00 A | 55 | 100% |  |  |  |  | navid | 3h | 3h | 18 | 18 | 97/02/20 | 97/02/21 | NA |
| 57 | 1.4.1.1.3 | وارد کردن در ابزار مناسب |  | 8h | 2018-05-12 09:00 A | 2018-05-12 17:00 A | 56 | 100% |  |  |  | finish no earlier than 2018-05-12 17:00 | reza | 8h | 8h | 48 | 48 | 97/02/21 | 97/02/22 | NA |

| ID | WBS | Task | Duration | Start | Finish | Predecessors | Complete | Remaining | Total slack | Free slack | Constraint | Resources | Work | Actual work | Cost | Actual cost | تاریخ شروع کار | تاریخ اتمام | تاریخ شروع |
| --- | --- | --- | --- | --- | --- | --- | --- | --- | --- | --- | --- | --- | --- | --- | --- | --- | --- | --- | --- |
| 58 | 1.4.1.1.4 | **مستند سازی** | 5.88d | 2018-05-12 09:00 A | 2018-05-16 17:00 A |  | 100% |  |  |  |  |  | 47h | 47h | 282 | 282 | 97/02/22 | 97/02/26 | NA |
| 59 | 1.4.1.1.4.1 | use case مستند سازی | 4d | 2018-05-12 09:00 A | 2018-05-15 09:00 A | 57 | 100% |  |  |  |  | reza | 32h | 32h | 192 | 192 | 97/02/22 | 97/02/25 | NA |
| 60 | 1.4.1.1.4.2 | اولویت بندی | 6h | 2018-05-15 09:00 A | 2018-05-15 16:00 A | 59 | 100% |  |  |  |  | navid | 6h | 6h | 36 | 36 | 97/02/25 | 97/02/25 | NA |
| 61 | 1.4.1.1.4.3 | پیدا کردن رابطه های پیشنیازی و پسنیازی | 9h | 2018-05-15 16:00 A | 2018-05-16 17:00 A | 60 | 100% |  |  |  |  | omid | 9h | 9h | 54 | 54 | 97/02/25 | 97/02/26 | NA |
| 62 | 1.4.1.1.5 | تایید و بازخوانی توسط اعضا و مدیر | 5h | 2018-05-17 11:00 | 2018-05-17 17:00 | 61 |  |  | 112d |  | finish no earlier than 2018-05-17 17:00 | navid | 5h |  | 30 |  | 97/02/27 | 97/02/27 | NA |
| 63 | 1.4.1.2 | **تدوین سناریو های تست** | 10.62d | 2018-05-17 08:00 A | 2018-05-26 13:00 |  | 70% | 3.19d | 22.25d |  |  |  | 80h | 56h | 480 | 336 | 97/02/27 | 97/03/05 | NA |
| 64 | 1.4.1.2.1 | نوشتن سناریو ها | 4d | 2018-05-17 08:00 A | 2018-05-20 12:00 A | 62 | 100% |  |  |  |  | reza | 32h | 32h | 192 | 192 | 97/02/27 | 97/02/30 | NA |
| 65 | 1.4.1.2.2 | مشخص کردن تست ها | 3d | 2018-05-20 17:00 A | 2018-05-23 14:00 A | 64 | 100% |  |  |  |  | navid | 24h | 24h | 144 | 144 | 97/02/30 | 97/03/02 | NA |
| 66 | 1.4.1.2.3 | مشخص کردن داده ی تست ها | 3d | 2018-05-23 14:00 | 2018-05-26 13:00 | 65 |  |  | 22.25d | 0d |  | omid | 24h |  | 144 |  | 97/03/02 | 97/03/05 | NA |
| 67 | 1.4.1.3 | تایید توسط اعضا و مدیر | 6h | 2018-05-26 13:00 | 2018-05-26 19:00 | 66 |  |  | 22.25d | 0d |  | navid | 6h |  | 36 |  | 97/03/05 | 97/03/05 | NA |
| 68 | 1.4.2 | وتست هاuse case فرستادن | 1h | 2018-05-26 19:00 | 2018-05-26 20:00 | 67 |  |  | 22.25d | 20.5d |  | reza | 1h |  | 6 |  | 97/03/05 | 97/03/05 | NA |
| 69 | 1.5 | **فاز پنجم پروژه** | 648h | 2018-06-14 08:00 | 2018-08-23 17:00 |  |  |  |  |  |  |  | 1518h |  | 9,108 |  | 97/03/24 | 97/06/01 | NA |
| 70 | 1.5.1 | **ERD تحلیل و تدوین** | 7.5d | 2018-06-14 08:00 | 2018-06-20 12:00 |  |  |  | 1.75d |  |  |  | 94h |  | 564 |  | 97/03/24 | 97/03/30 | NA |
| 71 | 1.5.1.1 | مطالعه و تحلیل محیط | 2h | 2018-06-14 08:00 | 2018-06-14 10:00 | 68 |  |  | 1.75d | 0d |  | navid; reza | 2h |  | 12 |  | 97/03/24 | 97/03/24 | NA |
| 72 | 1.5.1.2 | مشخص کردن نیاز مندی ها | 3h | 2018-06-14 10:00 | 2018-06-14 14:00 | 71 |  |  | 1.75d | 0d |  | omid; navid | 3h |  | 18 |  | 97/03/24 | 97/03/24 | NA |
| 73 | 1.5.1.3 | تشخیص محدودیت ها | 3h | 2018-06-14 14:00 | 2018-06-14 17:00 | 72 |  |  | 1.75d | 0d |  | navid | 3h |  | 18 |  | 97/03/24 | 97/03/24 | NA |
| 74 | 1.5.1.4 | **مطالعه موجودیت ها** | 1.12d | 2018-06-15 08:00 | 2018-06-16 09:00 |  |  |  | 1.75d |  |  |  | 16h |  | 96 |  | 97/03/25 | 97/03/26 | NA |
| 75 | 1.5.1.4.1 | تعیین موجودیت ها | 2h | 2018-06-15 08:00 | 2018-06-15 10:00 | 73 |  |  | 1.75d | 0d |  | navid | 2h |  | 12 |  | 97/03/25 | 97/03/25 | NA |
| 76 | 1.5.1.4.2 | تعیین وضع موجودیت ها | 2h | 2018-06-15 10:00 | 2018-06-15 12:00 | 75 |  |  | 79.5d |  |  | reza | 2h |  | 12 |  | 97/03/25 | 97/03/25 | NA |
| 77 | 1.5.1.4.3 | تعیین صفت ها ی هر موجودیت | 4h | 2018-06-15 10:00 | 2018-06-15 15:00 | 75 |  |  | 1.75d | 0d |  | navid; reza | 8h |  | 48 |  | 97/03/25 | 97/03/25 | NA |
| 78 | 1.5.1.4.4 | **نوع ارتباط های موجودیت ها** | 0.38d | 2018-06-15 15:00 | 2018-06-16 09:00 | 77 |  |  | 1.75d |  |  |  | 4h |  | 24 |  | 97/03/25 | 97/03/26 | NA |
| 79 | 1.5.1.4.4.1 | چندی ارتباط | 3h | 2018-06-15 15:00 | 2018-06-16 09:00 |  |  |  | 78.88d |  |  | omid | 3h |  | 18 |  | 97/03/25 | 97/03/26 | NA |
| 80 | 1.5.1.4.4.2 | الزامی بودن یا نبودن ارتباط | 1h | 2018-06-15 15:00 | 2018-06-15 16:00 |  |  |  | 1.75d | 0d |  | reza | 1h |  | 6 |  | 97/03/25 | 97/03/25 | NA |
| 81 | 1.5.1.5 | **نمودار** | 4.62d | 2018-06-15 16:00 | 2018-06-19 12:00 |  |  |  | 73.5d |  |  |  | 52h |  | 312 |  | 97/03/25 | 97/03/29 | NA |
| 82 | 1.5.1.5.1 | رسم نمودار بر کاغذ | 2d | 2018-06-15 16:00 | 2018-06-17 11:00 | 80 |  |  | 74.62d | 1.12d |  | reza; navid | 32h |  | 192 |  | 97/03/25 | 97/03/27 | NA |
| 83 | 1.5.1.5.2 | وارسی نمودار و بهینه سازی | 1d | 2018-06-18 08:00 | 2018-06-18 17:00 | 82 |  |  | 73.5d | 0d | start no earlier than 2018-06-18 08:00 | reza; navid | 16h |  | 96 |  | 97/03/28 | 97/03/28 | NA |
| 84 | 1.5.1.5.3 | تایید توسط اعضا و مدیر | 2h | 2018-06-19 08:00 | 2018-06-19 10:00 | 83 |  |  | 73.5d | 0d |  | navid | 2h |  | 12 |  | 97/03/29 | 97/03/29 | NA |
| 85 | 1.5.1.5.4 | رسم با ابزار مناسب | 2h | 2018-06-19 10:00 | 2018-06-19 12:00 | 84 |  |  | 73.5d | 0d |  | omid | 2h |  | 12 |  | 97/03/29 | 97/03/29 | NA |
| 86 | 1.5.1.6 | نوشتن یادداشت های تکمیلی در صورت نیاز | 1d | 2018-06-19 13:00 | 2018-06-20 12:00 | 85 |  |  | 73.5d |  |  | reza; omid | 16h |  | 96 |  | 97/03/29 | 97/03/30 | NA |
| 87 | 1.5.1.7 | تایید توسط اعضا و مدیر | 1h | 2018-06-14 08:00 | 2018-06-14 09:00 |  |  |  | 80.75d | 0d |  | navid | 1h |  | 6 |  | 97/03/24 | 97/03/24 | NA |
| 88 | 1.5.1.8 | ارسال | 1h | 2018-06-14 09:00 | 2018-06-14 10:00 | 87 |  |  | 80.75d |  |  | reza | 1h |  | 6 |  | 97/03/24 | 97/03/24 | NA |

| ID | WBS | Task | Duration | Start | Finish | Predecessors | Total slack | Free slack | Resources | Work | Cost | تاریخ شروع کار | تاریخ اتمام | تاریخ شروع |
| --- | --- | --- | --- | --- | --- | --- | --- | --- | --- | --- | --- | --- | --- | --- |
| 89 | 1.5.2 | **پیاده سازی سامانه** | 77.38d | 2018-06-15 16:00 | 2018-08-22 10:00 |  | 1.75d |  |  | 1424h | 8,544 | 97/03/25 | 97/05/31 | NA |
| 90 | 1.5.2.1 | **طراحی منطقی سامانه** | 16.38d | 2018-06-15 16:00 | 2018-06-30 10:00 |  | 1.75d |  |  | 64h | 384 | 97/03/25 | 97/04/09 |  |
| 91 | 1.5.2.1.1 | **طراحی منطقی ظاهر کلی سامانه** | 4d | 2018-06-15 16:00 | 2018-06-18 16:00 |  | 1.75d |  |  | 64h | 384 | 97/03/25 | 97/03/28 |  |
| 92 | 1.5.2.1.1.1 | طراحی منطقی صفحات سامانه | 2d | 2018-06-15 16:00 | 2018-06-17 11:00 | 80 | 1.75d | 0d | navid; reza | 32h | 192 | 97/03/25 | 97/03/27 |  |
| 93 | 1.5.2.1.1.2 | **ارتباط صفحات سامانه با هم دیگر** | 2d | 2018-06-17 11:00 | 2018-06-18 16:00 |  | 1.75d |  |  | 32h | 192 | 97/03/27 | 97/03/28 |  |
| 94 | 1.5.2.1.1.2.1 | ارتباط درون سامانه ای | 2d | 2018-06-17 11:00 | 2018-06-18 16:00 | 92 | 1.75d | 0d | navid | 16h | 96 | 97/03/27 | 97/03/28 |  |
| 95 | 1.5.2.1.1.2.2 | ارتباط های برون سامانه ای به درون سامانه ای | 2d | 2018-06-17 11:00 | 2018-06-18 16:00 | 94SS | 1.75d | 0d | reza | 16h | 96 | 97/03/27 | 97/03/28 |  |
| 96 | 1.5.2.1.2 | **طراحی منطقی مکانیزم های ارتباط** | 10d | 2018-06-18 16:00 | 2018-06-27 16:00 |  | 1.75d |  |  |  |  | 97/03/28 | 97/04/06 |  |
| 97 | 1.5.2.1.2.1 | مکانیزم های انتقال داده | 3d | 2018-06-18 16:00 | 2018-06-21 16:00 | 95 | 1.75d | 0d |  |  |  | 97/03/28 | 97/03/31 |  |
| 98 | 1.5.2.1.2.2 | مکانیزم های ارسال داده ای خودکار | 4d | 2018-06-21 16:00 | 2018-06-24 19:00 | 97 | 1.75d | 0d |  |  |  | 97/03/31 | 97/04/03 |  |
| 99 | 1.5.2.1.2.3 | مکانیزم های کنترلی | 3d | 2018-06-24 19:00 | 2018-06-27 16:00 | 98 | 1.75d | 0d |  |  |  | 97/04/03 | 97/04/06 |  |
| 100 | 1.5.2.1.3 | یادداشت های تکمیلی | 1d | 2018-06-27 16:00 | 2018-06-28 16:00 | 99 | 1.75d | 0d |  |  |  | 97/04/06 | 97/04/07 |  |
| 101 | 1.5.2.1.4 | تایید توسط مدیر پروژه | 3h | 2018-06-28 16:00 | 2018-06-29 10:00 | 100 | 1.75d | 0d |  |  |  | 97/04/07 | 97/04/08 |  |
| 102 | 1.5.2.1.5 | مستند سازی طراحی منطقی | 1d | 2018-06-29 10:00 | 2018-06-30 10:00 | 101 | 1.75d | 0d |  |  |  | 97/04/08 | 97/04/09 |  |
| 103 | 1.5.2.2 | **پیاده سازی** | 61d | 2018-06-30 10:00 | 2018-08-22 10:00 |  | 1.75d |  |  | 1360h | 8,160 | 97/04/09 | 97/05/31 |  |
| 104 | 1.5.2.2.1 | پیاده سازی صفحات مختلف | 15d | 2018-06-30 10:00 | 2018-07-13 10:00 | 102 | 1.75d | 0d | navid; reza; omid | 360h | 2,160 | 97/04/09 | 97/04/22 |  |
| 105 | 1.5.2.2.2 | **پیاده سازی ارتباط ها** | 25d | 2018-07-13 10:00 | 2018-08-04 10:00 |  | 1.75d |  |  | 512h | 3,072 | 97/04/22 | 97/05/13 |  |
| 106 | 1.5.2.2.2.1 | پیاده سازی ارتباط صفحات | 8d | 2018-07-13 10:00 | 2018-07-20 10:00 | 104 | 1.75d | 0d | navid; omid; reza | 192h | 1,152 | 97/04/22 | 97/04/29 |  |
| 107 | 1.5.2.2.2.2 | پیاده سازی ارتباط برون سامانه ای | 6d | 2018-07-13 10:00 | 2018-07-18 10:00 | 104 | 3.75d | 2d | omid | 48h | 288 | 97/04/22 | 97/04/27 |  |
| 108 | 1.5.2.2.2.3 | پیاده سازی ارتباط های داده ای و پشت سامانه ای | 17d | 2018-07-20 10:00 | 2018-08-04 10:00 | 107, 106 | 1.75d | 0d | navid; reza | 272h | 1,632 | 97/04/29 | 97/05/13 |  |
| 109 | 1.5.2.2.3 | پیاده سازی مکانیزم های کنترلی | 7d | 2018-08-04 10:00 | 2018-08-10 10:00 | 108 | 1.75d | 0d | navid; omid; reza | 168h | 1,008 | 97/05/13 | 97/05/19 |  |
| 110 | 1.5.2.2.4 | تست و بهبود سامانه | 7d | 2018-08-10 10:00 | 2018-08-16 10:00 | 109 | 1.75d | 0d | navid; omid; reza | 168h | 1,008 | 97/05/19 | 97/05/25 |  |
| 111 | 1.5.2.2.5 | نمرات اضافی | 6d | 2018-08-16 10:00 | 2018-08-21 10:00 | 110 | 1.75d | 0d | navid; omid; reza | 144h | 864 | 97/05/25 | 97/05/30 |  |
| 112 | 1.5.2.2.6 | تحویل سامانه | 1d | 2018-08-21 10:00 | 2018-08-22 10:00 | 111 | 1.75d |  | reza | 8h | 48 | 97/05/30 | 97/05/31 |  |
